Schedule from MS Project, 2020-11-16 to 2020-12-16, costs in ¥.

## Calendars

- 标准: Mon-Fri 08:00-12:00, 13:00-17:00; Sat-Sun off.

## Resources

| Resource | Rate |
| --- | --- |
| 张雨萌 | 35 |
| 雍思姗 | 35 |
| 谢好 | 35 |
| 贺词 | 35 |
| 刘瑞婷 | 35 |
| 史恺伦 | 35 |
| 间接成本 |  |
| 储备资金 |  |

## Schedule

| ID | WBS | Task | Type | Duration | Start | Finish | Predecessors | Total slack | Resources | Work | Cost |
| --- | --- | --- | --- | --- | --- | --- | --- | --- | --- | --- | --- |
| 1 | 1 | **趣社系统** |  | 23d | 2020-11-16 08:00 | 2020-12-16 17:00 |  |  | 储备资金 [0.1%]; 间接成本 [0.1%] | 1103.84h | 64,524.72 |
| 2 | 1.1 | **1 学生部分** |  | 23d | 2020-11-16 08:00 | 2020-12-16 17:00 |  | 0d |  | 1103.84h | 49,634.4 |
| 3 | 1.1.1 | **1.1 学生模块** |  | 23d | 2020-11-16 08:00 | 2020-12-16 17:00 |  | 0d |  | 1103.84h | 49,634.4 |
| 4 | 1.1.1.1 | **1.1.1 登录请求** |  | 9d | 2020-11-16 08:00 | 2020-11-26 17:00 | 10SS, 33SS, 47SS, 56SS |  |  | 72h | 3,520 |
| 5 | 1.1.1.1.1 | 1.1.1.1 构建学生信息数据表 | manual | 1d | 2020-11-16 08:00 | 2020-11-17 08:00 |  |  | 张雨萌 [15%]; 雍思姗 [15%]; 谢好 [15%]; 贺词 [15%]; 刘瑞婷 [40%] | 24h | 1,340 |
| 6 | 1.1.1.1.2 | 1.1.1.2 设计登录请求界面 | manual | 1d | 2020-11-19 08:00 | 2020-11-20 00:00 | 5 |  | 张雨萌 | 16h | 660 |
| 7 | 1.1.1.1.3 | 1.1.1.3 登录申请处理的编码 | manual | 1d | 2020-11-23 08:00 | 2020-11-24 00:00 | 6 |  | 张雨萌 | 16h | 660 |
| 8 | 1.1.1.1.4 | 1.1.1.4 单元测试 | manual | 0.88d | 2020-11-25 08:00 | 2020-11-25 16:00 | 5, 6, 7 |  | 张雨萌 | 8h | 480 |
| 9 | 1.1.1.1.5 | 1.1.1.5 文档编写 | manual | 0.88d | 2020-11-26 08:00 | 2020-11-26 16:00 | 5, 6, 7, 8 |  | 张雨萌 | 8h | 380 |
| 10 | 1.1.1.2 | **1.1.2 社团信息展示** |  | 16d | 2020-11-16 08:00 | 2020-12-07 17:00 |  |  |  | 255.84h | 12,154.4 |
| 11 | 1.1.1.2.1 | 1.1.2.1 设计浏览全部社团界面 | manual | 1d | 2020-11-16 08:00 | 2020-11-17 00:00 |  |  | 刘瑞婷 | 16h | 660 |
| 12 | 1.1.1.2.2 | 1.1.2.2 浏览全部社团信息编码 | manual | 0.88d | 2020-11-18 08:00 | 2020-11-18 16:00 | 11 |  | 刘瑞婷 | 8h | 380 |
| 13 | 1.1.1.2.3 | 1.1.2.3 设计浏览社团分类界面 | manual | 0.88d | 2020-11-19 08:00 | 2020-11-19 16:00 |  |  | 贺词 | 8h | 380 |
| 14 | 1.1.1.2.4 | 1.1.2.4 浏览社团分类信息编码 | manual | 1d | 2020-11-20 08:00 | 2020-11-21 00:00 | 13 |  | 贺词 | 16h | 760 |
| 15 | 1.1.1.2.5 | 1.1.2.5 设计浏览社团排行信息界面 | manual | 1d | 2020-11-18 08:00 | 2020-11-19 00:00 | 11 |  | 贺词 | 16h | 660 |
| 16 | 1.1.1.2.6 | 1.1.2.6 浏览社团排行信息编码 | manual | 1d | 2020-11-20 08:00 | 2020-11-21 00:00 | 11, 15 |  | 贺词 | 16h | 760 |
| 17 | 1.1.1.2.7 | 1.1.2.7 设计浏览单个分类社团信息界面 | manual | 0.88d | 2020-11-20 08:00 | 2020-11-20 16:00 | 13 |  | 贺词 | 8h | 380 |
| 18 | 1.1.1.2.8 | 1.1.2.8 浏览单个分类社团信息编码 | manual | 0.88d | 2020-11-23 08:00 | 2020-11-23 16:00 | 17 |  | 贺词 | 8h | 380 |
| 19 | 1.1.1.2.9 | 1.1.2.9 设计单个社团加入界面 | manual | 1d | 2020-11-18 08:00 | 2020-11-19 00:00 |  |  | 刘瑞婷 | 16h | 660 |
| 20 | 1.1.1.2.10 | 1.1.2.10 单个社团加入信息编码 | manual | 1d | 2020-11-20 08:00 | 2020-11-21 08:00 | 19 |  | 刘瑞婷 | 24h | 1,040 |
| 21 | 1.1.1.2.11 | 1.1.2.11 设计单个社团详情界面 | manual | 1d | 2020-11-20 08:00 | 2020-11-21 00:00 | 19 |  | 刘瑞婷 | 16h | 760 |
| 22 | 1.1.1.2.12 | 1.1.2.12 单个社团详情界面编码 | manual | 1d | 2020-11-24 08:00 | 2020-11-25 08:00 | 21 |  | 刘瑞婷 | 24h | 940 |
| 23 | 1.1.1.2.13 | 1.1.2.13 设计浏览社团成员个人信息界面 | manual | 0.88d | 2020-11-20 08:00 | 2020-11-20 16:00 | 19 |  | 刘瑞婷 | 8h | 380 |
| 24 | 1.1.1.2.14 | 1.1.2.14 浏览社团成员个人信息编码 | manual | 0.88d | 2020-11-23 08:00 | 2020-11-23 16:00 | 23 |  | 刘瑞婷 | 8h | 380 |
| 25 | 1.1.1.2.15 | 1.1.2.15 设计社团热门活动界面 | manual | 0.88d | 2020-11-20 08:00 | 2020-11-20 16:00 | 19 |  | 刘瑞婷 | 8h | 380 |
| 26 | 1.1.1.2.16 | 1.1.2.16 社团热门活动编码 | manual | 0.88d | 2020-11-23 08:00 | 2020-11-23 16:00 | 25 |  | 刘瑞婷 | 8h | 380 |
| 27 | 1.1.1.2.17 | 1.1.2.17 设计浏览社团往日课程信息界面 | manual | 0.88d | 2020-11-24 08:00 | 2020-11-24 16:00 | 21 |  | 雍思姗 | 8h | 380 |
| 28 | 1.1.1.2.18 | 1.1.2.18 浏览社团往日课程信息编码 | manual | 0.88d | 2020-11-25 08:00 | 2020-11-25 16:00 | 27 |  | 雍思姗 | 8h | 580 |
| 29 | 1.1.1.2.19 | 1.1.2.19 设计浏览单个社团构建活动信息界面 | manual | 0.88d | 2020-11-24 08:00 | 2020-11-24 16:00 | 21 |  | 雍思姗 | 8h | 380 |
| 30 | 1.1.1.2.20 | 1.1.2.20 浏览单个社团创建活动信息编码 | manual | 0.88d | 2020-11-25 08:00 | 2020-11-25 16:00 | 29 |  | 雍思姗 | 8h | 380 |
| 31 | 1.1.1.2.21 | 1.1.2.21 单元测试 | manual | 0.88d | 2020-11-26 08:00 | 2020-11-26 16:00 | 30 |  | 贺词 [33%]; 刘瑞婷 [33%]; 雍思姗 [33%] | 7.92h | 777.2 |
| 32 | 1.1.1.2.22 | 1.1.2.22 文档编写 | manual | 0.88d | 2020-11-27 08:00 | 2020-11-27 16:00 | 31 |  | 贺词 [33%]; 刘瑞婷 [33%]; 雍思姗 [33%] | 7.92h | 377.2 |

| ID | WBS | Task | Type | Duration | Start | Finish | Predecessors | Total slack | Resources | Work | Cost |
| --- | --- | --- | --- | --- | --- | --- | --- | --- | --- | --- | --- |
| 33 | 1.1.1.3 | **1.1.3 动态发布展示** |  | 6.88d | 2020-11-16 08:00 | 2020-11-24 16:00 |  | 0d |  | 176h | 7,760 |
| 34 | 1.1.1.3.1 | 1.1.3.1 设计浏览动态信息界面 | manual | 1d | 2020-11-16 08:00 | 2020-11-17 00:00 |  |  | 谢好 | 16h | 660 |
| 35 | 1.1.1.3.2 | 1.1.3.2 浏览动态信息编码 | manual | 1d | 2020-11-18 08:00 | 2020-11-19 00:00 | 34 |  | 谢好 | 16h | 660 |
| 36 | 1.1.1.3.3 | 1.1.3.3 设计动态发布信息界面 | manual | 0.88d | 2020-11-18 08:00 | 2020-11-18 16:00 | 34 |  | 谢好 | 8h | 380 |
| 37 | 1.1.1.3.4 | 1.1.3.4 动态发布信息编码 | manual | 1d | 2020-11-19 08:00 | 2020-11-20 08:00 | 36 |  | 谢好 | 24h | 1,040 |
| 38 | 1.1.1.3.5 | 1.1.3.5 设计动态定位界面 | manual | 1d | 2020-11-19 08:00 | 2020-11-20 00:00 | 36 |  | 谢好 | 16h | 660 |
| 39 | 1.1.1.3.6 | 1.1.3.6 动态定位编码 | manual | 1d | 2020-11-19 08:00 | 2020-11-20 00:00 | 36 |  | 雍思姗 | 16h | 660 |
| 40 | 1.1.1.3.7 | 1.1.3.7 设计动态评论界面 | manual | 1d | 2020-11-18 08:00 | 2020-11-19 00:00 | 34 |  | 谢好 | 16h | 660 |
| 41 | 1.1.1.3.8 | 1.1.3.8 动态评论信息编码 | manual | 1d | 2020-11-20 08:00 | 2020-11-21 08:00 | 40 |  | 谢好 | 24h | 940 |
| 42 | 1.1.1.3.9 | 1.1.3.9 动态点赞编码 | manual | 0.88d | 2020-11-18 08:00 | 2020-11-18 16:00 | 34 |  | 谢好 | 8h | 380 |
| 43 | 1.1.1.3.10 | 1.1.3.10 设计动态展示范围界面 | manual | 0.88d | 2020-11-19 08:00 | 2020-11-19 16:00 | 36 |  | 谢好 | 8h | 380 |
| 44 | 1.1.1.3.11 | 1.1.3.11 动态展示范围编码 | manual | 0.88d | 2020-11-20 08:00 | 2020-11-20 16:00 | 43 |  | 谢好 | 8h | 380 |
| 45 | 1.1.1.3.12 | 1.1.3.12 单元测试 | manual | 0.88d | 2020-11-23 08:00 | 2020-11-23 16:00 | 44 |  | 谢好 | 8h | 580 |
| 46 | 1.1.1.3.13 | 1.1.3.13 文档编写 | manual | 0.88d | 2020-11-24 08:00 | 2020-11-24 16:00 | 45 |  | 谢好 | 8h | 380 |
| 47 | 1.1.1.4 | **1.1.4 活动交互** |  | 15d | 2020-11-16 08:00 | 2020-12-05 00:00 |  | 0d |  | 160h | 6,800 |
| 48 | 1.1.1.4.1 | 1.1.4.1 设计浏览全部活动信息界面 | manual | 1d | 2020-11-16 08:00 | 2020-11-17 08:00 |  |  | 谢好 | 24h | 940 |
| 49 | 1.1.1.4.2 | 1.1.4.2 浏览全部活动编码 | manual | 1d | 2020-11-19 08:00 | 2020-11-20 08:00 | 48 |  | 谢好 | 24h | 940 |
| 50 | 1.1.1.4.3 | 1.1.4.3 设计单个活动详情界面 | manual | 1d | 2020-11-22 08:00 | 2020-11-23 00:00 |  |  | 雍思姗 | 16h | 660 |
| 51 | 1.1.1.4.4 | 1.1.4.4 单个活动详情编码 | manual | 1d | 2020-11-24 08:00 | 2020-11-25 08:00 | 50 |  | 雍思姗 | 24h | 1,040 |
| 52 | 1.1.1.4.5 | 1.1.4.5 设计单个社团活动界面 | manual | 1d | 2020-11-25 08:00 | 2020-11-26 00:00 |  |  | 雍思姗 | 16h | 660 |
| 53 | 1.1.1.4.6 | 1.1.4.6 单个社团活动编码 | manual | 1d | 2020-11-27 08:00 | 2020-11-28 08:00 | 52 |  | 雍思姗 | 24h | 1,040 |
| 54 | 1.1.1.4.7 | 1.1.4.7 单元测试 | manual | 1d | 2020-12-02 08:00 | 2020-12-03 00:00 | 53 |  | 雍思姗 [50%]; 谢好 [50%] | 16h | 860 |
| 55 | 1.1.1.4.8 | 1.1.4.8 文档编写 | manual | 1d | 2020-12-04 08:00 | 2020-12-05 00:00 | 54 |  | 谢好 [50%]; 雍思姗 [50%] | 16h | 660 |
| 56 | 1.1.1.5 | **1.1.5 个人信息维护** |  | 23d | 2020-11-16 08:00 | 2020-12-16 17:00 |  |  |  | 272h | 11,520 |
| 57 | 1.1.1.5.1 | 1.1.5.1 设计个人信息展示界面 | manual | 1d | 2020-11-16 08:00 | 2020-11-17 08:00 |  |  | 张雨萌 | 24h | 940 |
| 58 | 1.1.1.5.2 | 1.1.5.2 个人信息展示编码 | manual | 1d | 2020-11-19 08:00 | 2020-11-20 08:00 | 57 |  | 张雨萌 | 24h | 940 |
| 59 | 1.1.1.5.3 | 1.1.5.3 设计设置界面 | manual | 1d | 2020-11-22 08:00 | 2020-11-23 08:00 |  |  | 张雨萌 | 24h | 940 |
| 60 | 1.1.1.5.4 | 1.1.5.4 设置界面编码 | manual | 1d | 2020-11-25 08:00 | 2020-11-26 00:00 | 59 |  | 张雨萌 | 16h | 760 |
| 61 | 1.1.1.5.5 | 1.1.5.5 设计修改个人信息界面 | manual | 0.88d | 2020-11-26 08:00 | 2020-11-26 16:00 |  |  | 张雨萌 | 8h | 380 |
| 62 | 1.1.1.5.6 | 1.1.5.6 修改个人信息界面编码 | manual | 1d | 2020-11-27 08:00 | 2020-11-28 00:00 | 61 |  | 张雨萌 | 16h | 660 |
| 63 | 1.1.1.5.7 | 1.1.5.7 设计修改密码界面 | manual | 1d | 2020-11-29 08:00 | 2020-11-30 00:00 |  |  | 张雨萌 | 16h | 660 |
| 64 | 1.1.1.5.8 | 1.1.5.8 修改密码编码 | manual | 1d | 2020-12-01 08:00 | 2020-12-02 08:00 | 63 |  | 张雨萌 | 24h | 1,040 |
| 65 | 1.1.1.5.9 | 1.1.5.9 设计我加入的社团界面 | manual | 1d | 2020-12-04 08:00 | 2020-12-05 00:00 |  |  | 张雨萌 | 16h | 660 |
| 66 | 1.1.1.5.10 | 1.1.5.10 我加入的社团编码 | manual | 1d | 2020-12-07 08:00 | 2020-12-08 00:00 | 65 |  | 张雨萌 | 16h | 660 |
| 67 | 1.1.1.5.11 | 1.1.5.11 设计我的动态界面 | manual | 0.88d | 2020-12-08 08:00 | 2020-12-08 16:00 |  |  | 刘瑞婷 | 8h | 380 |
| 68 | 1.1.1.5.12 | 1.1.5.12 我的动态编码 | manual | 1d | 2020-12-09 08:00 | 2020-12-10 00:00 | 67 |  | 刘瑞婷 | 16h | 660 |
| 69 | 1.1.1.5.13 | 1.1.5.13 设计我的活动界面 | manual | 1d | 2020-12-09 08:00 | 2020-12-10 00:00 |  |  | 张雨萌 | 16h | 660 |
| 70 | 1.1.1.5.14 | 1.1.5.14 我的活动编码 | manual | 1d | 2020-12-11 08:00 | 2020-12-12 00:00 | 69 |  | 张雨萌 | 16h | 660 |
| 71 | 1.1.1.5.15 | 1.1.5.15 单元测试 | manual | 1d | 2020-12-14 08:00 | 2020-12-15 00:00 | 69, 70 |  | 张雨萌 [75%]; 刘瑞婷 [25%] | 16h | 860 |
| 72 | 1.1.1.5.16 | 1.1.5.16 文档编写 | manual | 0.88d | 2020-12-16 08:00 | 2020-12-16 16:00 | 71 |  | 张雨萌; 刘瑞婷 | 16h | 660 |

| ID | WBS | Task | Type | Duration | Start | Finish | Predecessors | Total slack | Resources | Work | Cost |
| --- | --- | --- | --- | --- | --- | --- | --- | --- | --- | --- | --- |
| 73 | 1.1.1.6 | **1.1.6 环信交流** |  | 10d | 2020-12-01 08:00 | 2020-12-15 08:00 |  | 0d |  | 168h | 7,880 |
| 74 | 1.1.1.6.1 | 1.1.6.1 设计我的好友界面 | manual | 0.88d | 2020-12-05 08:00 | 2020-12-05 16:00 |  |  | 史恺伦 | 8h | 380 |
| 75 | 1.1.1.6.2 | 1.1.6.2 添加好友编码 | manual | 1d | 2020-12-07 08:00 | 2020-12-08 00:00 | 74 |  | 史恺伦 | 16h | 860 |
| 76 | 1.1.1.6.3 | 1.1.6.3 设计发送消息界面 | manual | 1d | 2020-12-01 08:00 | 2020-12-02 00:00 |  |  | 史恺伦 | 16h | 660 |
| 77 | 1.1.1.6.4 | 1.1.6.4 发送消息编码 | manual | 1d | 2020-12-03 08:00 | 2020-12-04 08:00 | 76 |  | 史恺伦 | 24h | 1,340 |
| 78 | 1.1.1.6.5 | 1.1.6.5 设计消息列表界面 | manual | 1d | 2020-12-01 08:00 | 2020-12-02 00:00 |  |  | 史恺伦 | 16h | 660 |
| 79 | 1.1.1.6.6 | 1.1.6.6 消息列表编码 | manual | 1d | 2020-12-03 08:00 | 2020-12-04 08:00 | 78 |  | 史恺伦 | 24h | 1,240 |
| 80 | 1.1.1.6.7 | 1.1.6.7 个人信息交互编码 | manual | 1d | 2020-12-08 08:00 | 2020-12-09 08:00 |  |  | 史恺伦 | 24h | 940 |
| 81 | 1.1.1.6.8 | 1.1.6.8 单元测试 | manual | 1d | 2020-12-11 08:00 | 2020-12-12 00:00 | 80 |  | 史恺伦 | 16h | 860 |
| 82 | 1.1.1.6.9 | 1.1.6.9 文档编写 | manual | 1d | 2020-12-14 08:00 | 2020-12-15 08:00 | 81 |  | 史恺伦 | 24h | 940 |
