# 项目规划-张雨萌

Schedule from MS Project, 2020-11-16 to 2020-12-15, costs in ¥.
Microsoft

## Calendars

- 标准: Mon-Fri 08:00-12:00, 13:00-17:00; Sat-Sun off.

## Resources

| Resource | Rate |
| --- | --- |
| 张雨萌 | 30 |
| 贺词 | 30 |
| 刘瑞婷 | 30 |
| 谢好 | 30 |
| 雍思姗 | 30 |
| 史恺伦 | 30 |
| 间接成本 |  |
| 储备资金 |  |

## Schedule

| ID | WBS | Task | Type | Duration | Start | Finish | Predecessors | Total slack | Constraint | Resources | Work | Cost |
| --- | --- | --- | --- | --- | --- | --- | --- | --- | --- | --- | --- | --- |
| 1 | 1 | **趣社系统** |  | 22d | 2020-11-16 | 2020-12-15 |  |  |  | 间接成本 [0.1%]; 储备资金 [0.1%] | 688h | 31,642 |
| 2 | 1.1 | **1 学生部分** |  | 22d | 2020-11-16 | 2020-12-15 |  |  |  |  | 688h | 24,340 |
| 3 | 1.1.1 | **1.1 学生模块** |  | 22d | 2020-11-16 | 2020-12-15 |  |  |  |  | 688h | 24,340 |
| 4 | 1.1.1.1 | **1.1.1 登录请求** |  | 6d | 2020-11-16 | 2020-11-23 |  |  |  |  | 52h | 2,210 |
| 5 | 1.1.1.1.1 | 1.1.1.1 构建趣社数据表 | manual | 0.88d | 2020-11-16 | 2020-11-16 |  |  |  | 张雨萌 [20%]; 贺词 [20%]; 刘瑞婷 [20%]; 谢好 [20%]; 雍思姗 [20%] | 8h | 540 |
| 6 | 1.1.1.1.2 | 1.1.1.2 设计登录请求页面 | manual | 1d | 2020-11-17 | 2020-11-18 |  |  |  | 张雨萌 [50%] | 8h | 290 |
| 7 | 1.1.1.1.3 | 1.1.1.3 登录请求的编码 | manual | 1d | 2020-11-18 | 2020-11-19 | 5, 6SS |  |  | 张雨萌 [50%] | 8h | 290 |
| 8 | 1.1.1.1.4 | 1.1.1.4 设计忘记密码页面 | manual | 1d | 2020-11-19 | 2020-11-20 |  |  |  | 张雨萌 [50%] | 8h | 290 |
| 9 | 1.1.1.1.5 | 1.1.1.5 忘记密码的编码 | manual | 1d | 2020-11-20 | 2020-11-21 | 5, 8SS |  | start no earlier than 2020-11-20 | 张雨萌 [50%] | 8h | 290 |
| 10 | 1.1.1.1.6 | 1.1.1.6 设计关于我们页面及编码 | manual | 1d | 2020-11-21 | 2020-11-22 |  |  |  | 张雨萌 [50%] | 8h | 290 |
| 11 | 1.1.1.1.7 | 1.1.1.7 单元测试 | manual | 0.88d | 2020-11-23 | 2020-11-23 | 10 |  |  | 张雨萌 [50%] | 4h | 220 |
| 12 | 1.1.1.2 | **1.1.2 社团信息展示** |  | 11d | 2020-11-17 | 2020-12-02 |  | 0d |  |  | 208h | 7,140 |
| 13 | 1.1.1.2.1 | 1.1.2.1 设计首页 | manual | 1d | 2020-11-17 | 2020-11-18 |  |  |  | 雍思姗 [50%] | 8h | 290 |
| 14 | 1.1.1.2.2 | 1.1.2.2 首页编码 | manual | 1d | 2020-11-17 | 2020-11-18 | 13SS, 5 |  |  | 雍思姗 [50%] | 8h | 290 |
| 15 | 1.1.1.2.3 | 1.1.2.3 设计社团全部页面 | manual | 1.88d | 2020-11-17 | 2020-11-18 |  |  |  | 刘瑞婷 [50%] | 16h | 530 |
| 16 | 1.1.1.2.4 | 1.1.2.4 社团全部编码 | manual | 1.88d | 2020-11-17 | 2020-11-18 | 15SS, 5 |  |  | 刘瑞婷 [50%] | 16h | 530 |
| 17 | 1.1.1.2.5 | 1.1.2.5 设计社团分类页面 | manual | 1d | 2020-11-20 | 2020-11-21 |  |  |  | 贺词 [50%] | 12h | 410 |
| 18 | 1.1.1.2.6 | 1.1.2.6 社团分类编码 | manual | 1d | 2020-11-20 | 2020-11-21 | 22, 17SS |  |  | 贺词 [50%] | 12h | 410 |
| 19 | 1.1.1.2.7 | 1.1.2.7 设计分类详情页面 | manual | 1d | 2020-11-25 | 2020-11-26 |  |  |  | 贺词 [50%] | 12h | 410 |
| 20 | 1.1.1.2.8 | 1.1.2.8 分类详情编码 | manual | 1d | 2020-11-25 | 2020-11-26 | 18, 19SS |  |  | 贺词 [50%] | 12h | 410 |
| 21 | 1.1.1.2.9 | 1.1.2.9 设计社团排行页面 | manual | 1d | 2020-11-17 | 2020-11-18 |  |  |  | 贺词 [50%] | 12h | 410 |
| 22 | 1.1.1.2.10 | 1.1.2.10 社团排行编码 | manual | 1d | 2020-11-17 | 2020-11-18 | 21SS, 5 |  |  | 贺词 [50%] | 12h | 410 |
| 23 | 1.1.1.2.11 | 1.1.2.1 设计社团详情页 | manual | 2d | 2020-11-23 | 2020-11-25 |  |  |  | 刘瑞婷 [50%] | 24h | 770 |
| 24 | 1.1.1.2.12 | 1.1.2.12 详情页编码 | manual | 2d | 2020-11-23 | 2020-11-25 | 16, 23SS |  |  | 刘瑞婷 [50%] | 24h | 770 |
| 25 | 1.1.1.2.13 | 1.1.2.13 设计社团课程页面 | manual | 1d | 2020-11-19 | 2020-11-20 |  |  |  | 雍思姗 [50%] | 12h | 410 |
| 26 | 1.1.1.2.14 | 1.1.2.14 社团课程编码 | manual | 1d | 2020-11-19 | 2020-11-20 | 14, 25SS |  |  | 雍思姗 [50%] | 12h | 410 |
| 27 | 1.1.1.2.15 | 1.1.2.15 单元测试 | manual | 1d | 2020-12-01 | 2020-12-02 | 20, 24, 26 |  |  | 贺词 [40%]; 刘瑞婷 [30%]; 雍思姗 [30%] | 16h | 680 |

| ID | WBS | Task | Type | Duration | Start | Finish | Predecessors | Total slack | Resources | Work | Cost |
| --- | --- | --- | --- | --- | --- | --- | --- | --- | --- | --- | --- |
| 28 | 1.1.1.3 | **1.1.3 动态发布展示** |  | 12.88d | 2020-11-17 | 2020-12-04 |  | 0d |  | 92h | 3,210 |
| 29 | 1.1.1.3.1 | 1.1.3.1 设计全部动态页面 | manual | 1d | 2020-11-17 | 2020-11-18 |  |  | 谢好 [50%] | 12h | 410 |
| 30 | 1.1.1.3.2 | 1.1.3.2 全部动态编码 | manual | 1d | 2020-11-17 | 2020-11-18 | 5, 29SS |  | 谢好 [50%] | 12h | 410 |
| 31 | 1.1.1.3.3 | 1.1.3.3 设计发布动态页面 | manual | 1d | 2020-11-20 | 2020-11-21 |  |  | 谢好 [50%] | 8h | 290 |
| 32 | 1.1.1.3.4 | 1.1.3.4 发布动态页面编码 | manual | 1d | 2020-11-20 | 2020-11-21 | 30SS |  | 谢好 [50%] | 8h | 290 |
| 33 | 1.1.1.3.5 | 1.1.3.5 发布动态定位编码 | manual | 1d | 2020-11-30 | 2020-12-01 | 32 |  | 贺词 [50%] | 12h | 410 |
| 34 | 1.1.1.3.6 | 1.1.3.6 设计评论页面 | manual | 1d | 2020-11-24 | 2020-11-25 |  |  | 谢好 [50%] | 12h | 410 |
| 35 | 1.1.1.3.7 | 1.1.3.7 评论页面编码 | manual | 1d | 2020-11-24 | 2020-11-25 | 32 |  | 谢好 [50%] | 12h | 410 |
| 36 | 1.1.1.3.8 | 1.1.3.8 单元测试 | manual | 1d | 2020-12-03 | 2020-12-04 | 33, 35 |  | 贺词 [20%]; 谢好 [80%] | 16h | 580 |
| 37 | 1.1.1.4 | **1.1.4 活动交互** |  | 7.88d | 2020-11-25 | 2020-12-06 |  | 0d |  | 76h | 2,680 |
| 38 | 1.1.1.4.1 | 1.1.4.1 设计活动页面 | manual | 1d | 2020-11-27 | 2020-11-28 |  |  | 谢好 [50%] | 8h | 290 |
| 39 | 1.1.1.4.2 | 1.1.4.2 活动页面编码 | manual | 1d | 2020-11-27 | 2020-11-28 | 35, 38SS |  | 谢好 [50%] | 8h | 290 |
| 40 | 1.1.1.4.3 | 1.1.4.3 设计活动详情页面 | manual | 1d | 2020-11-25 | 2020-11-26 |  |  | 雍思姗 [50%] | 12h | 410 |
| 41 | 1.1.1.4.4 | 1.1.4.4 活动详情页面编码 | manual | 1d | 2020-11-25 | 2020-11-26 | 26, 40SS |  | 雍思姗 [50%] | 12h | 410 |
| 42 | 1.1.1.4.5 | 1.1.4.5 设计社团活动列表页面 | manual | 1d | 2020-11-30 | 2020-12-01 |  |  | 雍思姗 [50%] | 8h | 290 |
| 43 | 1.1.1.4.6 | 1.1.4.6 社团活动列表编码 | manual | 1d | 2020-11-30 | 2020-12-01 | 41, 42SS |  | 雍思姗 [50%] | 12h | 410 |
| 44 | 1.1.1.4.7 | 1.1.4.7 单元测试 | manual | 1d | 2020-12-05 | 2020-12-06 | 43, 39 |  | 谢好 [20%]; 雍思姗 [80%] | 16h | 580 |
| 45 | 1.1.1.5 | **1.1.5 个人信息维护** |  | 14.88d | 2020-11-24 | 2020-12-15 |  | 0d |  | 176h | 6,080 |
| 46 | 1.1.1.5.1 | 1.1.5.1 设计个人信息页面 | manual | 1d | 2020-11-24 | 2020-11-25 |  |  | 张雨萌 [50%] | 12h | 410 |
| 47 | 1.1.1.5.2 | 1.1.5.2 个人信息页面编码 | manual | 1d | 2020-11-24 | 2020-11-25 | 11, 46SS |  | 张雨萌 [50%] | 12h | 410 |
| 48 | 1.1.1.5.3 | 1.1.5.3 设计设置页面 | manual | 1d | 2020-11-27 | 2020-11-28 |  |  | 张雨萌 [50%] | 8h | 290 |
| 49 | 1.1.1.5.4 | 1.1.5.4 设置页面编码 | manual | 1d | 2020-11-27 | 2020-11-28 | 47, 48SS |  | 张雨萌 [50%] | 8h | 290 |
| 50 | 1.1.1.5.5 | 1.1.5.5 设计修改个人信息页面 | manual | 1d | 2020-11-30 | 2020-12-01 |  |  | 张雨萌 [50%] | 12h | 410 |
| 51 | 1.1.1.5.6 | 1.1.5.6 修改个人信息页面编码 | manual | 1d | 2020-11-30 | 2020-12-01 | 49, 50SS |  | 贺词 [50%]; 张雨萌 [50%] | 24h | 770 |
| 52 | 1.1.1.5.7 | 1.1.5.7 设计修改密码页面 | manual | 1d | 2020-12-03 | 2020-12-04 |  |  | 张雨萌 [50%] | 12h | 410 |
| 53 | 1.1.1.5.8 | 1.1.5.8 修改密码页面编码 | manual | 1d | 2020-12-03 | 2020-12-04 | 51, 52SS |  | 张雨萌 [50%] | 12h | 410 |
| 54 | 1.1.1.5.9 | 1.1.5.9 设计我加入的社团页面 | manual | 1d | 2020-12-08 | 2020-12-09 |  |  | 张雨萌 [50%] | 12h | 410 |
| 55 | 1.1.1.5.10 | 1.1.5.10 我加入的社团页面编码 | manual | 1d | 2020-12-08 | 2020-12-09 | 53, 54SS |  | 张雨萌 [50%] | 12h | 410 |
| 56 | 1.1.1.5.11 | 1.1.5.11 调用动态页面 | manual | 1d | 2020-12-01 | 2020-12-02 |  |  | 刘瑞婷 [50%] | 8h | 290 |
| 57 | 1.1.1.5.12 | 1.1.5.12 我的动态页面编码 | manual | 1d | 2020-12-01 | 2020-12-02 | 24, 56SS |  | 刘瑞婷 [50%] | 12h | 410 |
| 58 | 1.1.1.5.13 | 1.1.5.13 调用活动页面 | manual | 1d | 2020-12-11 | 2020-12-12 |  |  | 张雨萌 [50%] | 8h | 290 |
| 59 | 1.1.1.5.14 | 1.1.5.14 我的活动页面编码 | manual | 1d | 2020-12-11 | 2020-12-12 | 55, 58SS |  | 张雨萌 [50%] | 8h | 290 |
| 60 | 1.1.1.5.15 | 1.1.5.15 单元测试 | manual | 1d | 2020-12-14 | 2020-12-15 | 57, 59 |  | 贺词 [10%]; 刘瑞婷 [10%]; 张雨萌 [80%] | 16h | 580 |

| ID | WBS | Task | Type | Duration | Start | Finish | Predecessors | Resources | Work | Cost |
| --- | --- | --- | --- | --- | --- | --- | --- | --- | --- | --- |
| 61 | 1.1.1.6 | **1.1.6 环信交流** |  | 12d | 2020-11-30 | 2020-12-15 |  |  | 84h | 3,020 |
| 62 | 1.1.1.6.1 | 1.1.6.1 设计环信交流页面 | manual | 1d | 2020-11-30 | 2020-12-01 |  | 史恺伦 [50%] | 8h | 290 |
| 63 | 1.1.1.6.2 | 1.1.6.2 环信交流页面编码 | manual | 1d | 2020-11-30 | 2020-12-01 | 5, 62SS | 史恺伦 [50%] | 8h | 290 |
| 64 | 1.1.1.6.3 | 1.1.6.3 设计学生个人页面 | manual | 1d | 2020-12-02 | 2020-12-03 |  | 史恺伦 [50%] | 8h | 290 |
| 65 | 1.1.1.6.4 | 1.1.6.4 学生个人页面编码 | manual | 1d | 2020-12-02 | 2020-12-03 | 63, 64SS | 史恺伦 [50%] | 12h | 410 |
| 66 | 1.1.1.6.5 | 1.1.6.5 设计我的好友页面 | manual | 1d | 2020-12-07 | 2020-12-08 |  | 史恺伦 [50%] | 8h | 290 |
| 67 | 1.1.1.6.6 | 1.1.6.6 我的好友页面编码 | manual | 1d | 2020-12-07 | 2020-12-08 | 65, 66SS | 史恺伦 [50%] | 8h | 290 |
| 68 | 1.1.1.6.7 | 1.1.6.7 设计消息列表页面 | manual | 1d | 2020-12-09 | 2020-12-10 |  | 史恺伦 [50%] | 12h | 410 |
| 69 | 1.1.1.6.8 | 1.1.6.8 消息列表页面 | manual | 1d | 2020-12-09 | 2020-12-10 | 67, 68SS | 史恺伦 [50%] | 12h | 410 |
| 70 | 1.1.1.6.9 | 1.1.6.9 单元测试 | manual | 1d | 2020-12-14 | 2020-12-15 | 69 | 史恺伦 [50%] | 8h | 340 |
